# elaboration_project_plan

Schedule from MS Project, 2006-11-01 to 2007-04-12, A marks actual dates.
Duke University

## Calendars

- Standard: Mon-Fri 08:00-12:00, 13:00-17:00; Sat-Sun off.

## Resources

| Resource |
| --- |
| Patrick |
| Ram |
| Elaborators |
| PriyatamElaborators |
| Development team |
| Pri |
| Priyatam |
| Ramakrishna |
| Kruttik |
| Manav |
| Developers |
| Development teatm |
| BAH |
| Adopters |
| Pryatam |

## Schedule

| ID | WBS | Task | Type | Duration | Start | Finish | Predecessors | Total slack | Free slack | Constraint |
| --- | --- | --- | --- | --- | --- | --- | --- | --- | --- | --- |
| 1 | 1 | **Iteration 1** |  | 117d? | 2006-11-01 | 2007-04-12 |  | 0d |  |  |
| 2 | 1.1 | Iteration start | milestone | 0d | 2007-03-01 | 2007-03-01 |  | -86d | 0d | start no earlier than 2007-03-01 |
| 3 | 1.2 | **Project Management** |  | 30d | 2006-11-01 | 2006-12-12 |  | 87d |  |  |
| 4 | 1.2.1 | **Draft project plan (task 1.1)** |  | 30d | 2006-11-01 | 2006-12-12 |  | 87d |  |  |
| 5 | 1.2.1.1 | Developer draft |  | 5d | 2006-11-01 | 2006-11-07 |  | 87d | 0d |  |
| 6 | 1.2.1.2 | BAH review |  | 5d | 2006-11-08 | 2006-11-14 | 5 | 87d | 0d |  |
| 7 | 1.2.1.3 | Developer update |  | 5d | 2006-11-15 | 2006-11-21 | 6 | 87d | 0d |  |
| 8 | 1.2.1.4 | Adopter review |  | 3d | 2006-11-22 | 2006-11-24 | 7 | 87d | 0d |  |
| 9 | 1.2.1.5 | Developer update |  | 2d | 2006-11-27 | 2006-11-28 | 8 | 87d | 0d |  |
| 10 | 1.2.1.6 | Deliver project plan to BAH (task 1.1) | milestone | 0d | 2006-11-28 | 2006-11-28 | 9 | 87d | 0d |  |
| 11 | 1.2.1.7 | BAH review project plan (task 1.1) |  | 10d | 2006-11-29 | 2006-12-12 | 10 | 87d |  |  |
| 12 | 1.2.2 | **Update risk matrix (task 1.3.1)** |  | 20d | 2006-11-01 | 2006-11-28 |  | 87d |  |  |
| 13 | 1.2.2.1 | Update risk matrix for week 1 |  | 5d | 2006-11-01 | 2006-11-07 |  | 87d | 0d |  |
| 14 | 1.2.2.2 | Update risk matrix for week 2 |  | 5d | 2006-11-08 | 2006-11-14 | 13 | 87d | 0d |  |
| 15 | 1.2.2.3 | Deliver risk matrix to BAH (task 1.3.1) | milestone | 0d | 2006-11-14 | 2006-11-14 | 14 | 87d | 0d |  |
| 16 | 1.2.2.4 | BAH review risk matrix (task 1.3.1) |  | 10d | 2006-11-15 | 2006-11-28 | 15 | 97d |  |  |
| 17 | 1.2.3 | **Monthly report (task 1.3.1)** |  | 20d | 2006-11-15 | 2006-12-12 | 15 | 87d |  |  |
| 18 | 1.2.3.1 | Update risk matrix for week 3 |  | 5d | 2006-11-15 | 2006-11-21 |  | 87d | 0d |  |
| 19 | 1.2.3.2 | Update risk matrix for week 4 |  | 5d | 2006-11-22 | 2006-11-28 | 18 | 87d | 0d |  |
| 20 | 1.2.3.3 | Deliver monthly report and risk matrix to BAH (task 1.3.1) | milestone | 0d | 2006-11-28 | 2006-11-28 | 19 | 87d | 0d |  |
| 21 | 1.2.3.4 | BAH review monthly report and risk matrix (task 1.3.1) |  | 10d | 2006-11-29 | 2006-12-12 | 20 | 87d |  |  |
| 22 | 1.3 | **Requirements and use cases** |  | 30d | 2007-03-01 | 2007-04-11 | 2 | 0d |  |  |
| 23 | 1.3.1 | **Create level 1 use cases and requirements** |  | 2d | 2007-03-01 | 2007-03-02 |  | 0d |  |  |
| 24 | 1.3.1.1 | Use case document (task 3.1.1) |  | 1d | 2007-03-01 | 2007-03-01 |  | 0d |  |  |
| 25 | 1.3.1.2 | Requirements document (3.2.1) |  | 1d | 2007-03-02 | 2007-03-02 | 24 | 0d |  |  |

| ID | WBS | Task | Duration | Start | Finish | Predecessors | Total slack | Free slack |
| --- | --- | --- | --- | --- | --- | --- | --- | --- |
| 26 | 1.3.2 | **Update use case document (task 3.1.1, task 5.2.1)** | 9d | 2007-03-05 | 2007-03-15 | 23 | 1d | 0d |
| 27 | 1.3.2.1 | **Update eligibility use cases** | 9d | 2007-03-05 | 2007-03-15 |  | 1d |  |
| 28 | 1.3.2.1.1 | Developer update | 2d | 2007-03-05 | 2007-03-06 |  | 1d | 0d |
| 29 | 1.3.2.1.2 | Adopter review | 5d | 2007-03-07 | 2007-03-13 | 28 | 1d | 0d |
| 30 | 1.3.2.1.3 | Developer update | 1d | 2007-03-14 | 2007-03-14 | 29 | 1d | 0d |
| 31 | 1.3.2.1.4 | Adopter sign-off | 1d | 2007-03-15 | 2007-03-15 | 30 | 1d |  |
| 32 | 1.3.2.2 | **Update study personel use cases** | 9d | 2007-03-05 | 2007-03-15 |  | 1d |  |
| 33 | 1.3.2.2.1 | Developer update | 2d | 2007-03-05 | 2007-03-06 |  | 1d | 0d |
| 34 | 1.3.2.2.2 | Adopter review | 5d | 2007-03-07 | 2007-03-13 | 33 | 1d | 0d |
| 35 | 1.3.2.2.3 | Developer update | 1d | 2007-03-14 | 2007-03-14 | 34 | 1d | 0d |
| 36 | 1.3.2.2.4 | Adopter sign-off | 1d | 2007-03-15 | 2007-03-15 | 35 | 1d |  |
| 37 | 1.3.2.3 | **Update multi-site trial use cases** | 9d | 2007-03-05 | 2007-03-15 |  | 1d |  |
| 38 | 1.3.2.3.1 | Developer update | 2d | 2007-03-05 | 2007-03-06 |  | 1d | 0d |
| 39 | 1.3.2.3.2 | Adopter review | 5d | 2007-03-07 | 2007-03-13 | 38 | 1d | 0d |
| 40 | 1.3.2.3.3 | Developer update | 1d | 2007-03-14 | 2007-03-14 | 39 | 1d | 0d |
| 41 | 1.3.2.3.4 | Adopter sign-off | 1d | 2007-03-15 | 2007-03-15 | 40 | 1d |  |
| 42 | 1.3.3 | **Update requirements document (task 3.2.1, task 5.3.1)** | 9d | 2007-03-16 | 2007-03-28 | 26 | 1d | 0d |
| 43 | 1.3.3.1 | **Update eligibility requirements** | 9d | 2007-03-16 | 2007-03-28 |  | 1d |  |
| 44 | 1.3.3.1.1 | Developer update | 2d | 2007-03-16 | 2007-03-19 |  | 1d | 0d |
| 45 | 1.3.3.1.2 | Adopter review | 5d | 2007-03-20 | 2007-03-26 | 44 | 1d | 0d |
| 46 | 1.3.3.1.3 | Developer update | 1d | 2007-03-27 | 2007-03-27 | 45 | 1d | 0d |
| 47 | 1.3.3.1.4 | Adopter sign-off | 1d | 2007-03-28 | 2007-03-28 | 46 | 1d |  |
| 48 | 1.3.3.2 | **Update study personel requirements** | 9d | 2007-03-16 | 2007-03-28 |  | 1d |  |
| 49 | 1.3.3.2.1 | Developer update | 2d | 2007-03-16 | 2007-03-19 |  | 1d | 0d |
| 50 | 1.3.3.2.2 | Adopter review | 5d | 2007-03-20 | 2007-03-26 | 49 | 1d | 0d |
| 51 | 1.3.3.2.3 | Developer update | 1d | 2007-03-27 | 2007-03-27 | 50 | 1d | 0d |
| 52 | 1.3.3.2.4 | Adopter sign-off | 1d | 2007-03-28 | 2007-03-28 | 51 | 1d |  |

| ID | WBS | Task | Type | Duration | Start | Finish | Predecessors | Total slack | Free slack |
| --- | --- | --- | --- | --- | --- | --- | --- | --- | --- |
| 53 | 1.3.3.3 | **Update multi-site trial requirements** |  | 9d | 2007-03-16 | 2007-03-28 |  | 1d |  |
| 54 | 1.3.3.3.1 | Developer update |  | 2d | 2007-03-16 | 2007-03-19 |  | 1d | 0d |
| 55 | 1.3.3.3.2 | Adopter review |  | 5d | 2007-03-20 | 2007-03-26 | 54 | 1d | 0d |
| 56 | 1.3.3.3.3 | Developer update |  | 1d | 2007-03-27 | 2007-03-27 | 55 | 1d | 0d |
| 57 | 1.3.3.3.4 | Adopter sign-off |  | 1d | 2007-03-28 | 2007-03-28 | 56 | 1d |  |
| 58 | 1.3.4 | Developer deliver use case document to BAH (task 3.1.1, task 5.2.1) | milestone | 0d | 2007-03-28 | 2007-03-28 | 42 | 1d | 0d |
| 59 | 1.3.5 | BAH review use case document (task 3.1.1, task 5.2.1) |  | 10d | 2007-03-29 | 2007-04-11 | 58 | 1d |  |
| 60 | 1.3.6 | Developer deliver requirements document to BAH (task 3.2.1, task 5.3.1) | milestone | 0d | 2007-03-28 | 2007-03-28 | 42 | 1d | 0d |
| 61 | 1.3.7 | BAH review requirements document (task 3.2.1, task 5.3.1) |  | 10d | 2007-03-29 | 2007-04-11 | 60 | 1d |  |
| 62 | 1.4 | **Analysis and Design** |  | 29d | 2007-03-05 | 2007-04-12 | 23 | 0d |  |
| 63 | 1.4.1 | **Perform level 1 design** |  | 2d | 2007-03-05 | 2007-03-06 |  | 0d |  |
| 64 | 1.4.1.1 | Cursory BRIDG harmonization |  | 1d | 2007-03-05 | 2007-03-05 |  | 0d |  |
| 65 | 1.4.1.2 | Update implementation model |  | 1d | 2007-03-06 | 2007-03-06 | 64 | 0d |  |
| 66 | 1.4.1.3 | Cursory system design |  | 2d | 2007-03-05 | 2007-03-06 |  | 0d |  |
| 67 | 1.4.2 | **Modeling (task 3.3.1)** |  | 27d | 2007-03-07 | 2007-04-12 | 63 | 0d |  |
| 68 | 1.4.2.1 | **Update model** |  | 6d | 2007-03-07 | 2007-03-14 |  | 0d |  |
| 69 | 1.4.2.1.1 | **BRIDG harmonization** |  | 3d | 2007-03-07 | 2007-03-09 | 63 | 0d |  |
| 70 | 1.4.2.1.1.1 | Harmonize Study model |  | 3d | 2007-03-07 | 2007-03-09 |  | 0d |  |
| 71 | 1.4.2.1.1.2 | Harmonize Personnel model |  | 3d | 2007-03-07 | 2007-03-09 |  | 0d |  |
| 72 | 1.4.2.1.2 | **Model implementation** |  | 3d | 2007-03-12 | 2007-03-14 | 69 | 0d |  |
| 73 | 1.4.2.1.2.1 | Implement Study model |  | 3d | 2007-03-12 | 2007-03-14 |  | 0d |  |
| 74 | 1.4.2.1.2.2 | Implement Personnel model |  | 3d | 2007-03-12 | 2007-03-14 |  | 0d |  |
| 75 | 1.4.2.2 | Adopter review |  | 5d | 2007-03-15 | 2007-03-21 | 68 | 0d |  |
| 76 | 1.4.2.3 | **Update model** |  | 6d | 2007-03-22 | 2007-03-29 | 75 | 0d |  |
| 77 | 1.4.2.3.1 | **BRIDG harmonization** |  | 3d | 2007-03-22 | 2007-03-26 | 75 | 0d |  |
| 78 | 1.4.2.3.1.1 | Harmonize Study model |  | 3d | 2007-03-22 | 2007-03-26 |  | 0d |  |
| 79 | 1.4.2.3.1.2 | Harmonize Personnel model |  | 3d | 2007-03-22 | 2007-03-26 |  | 0d |  |

| ID | WBS | Task | Type | Duration | Start | Finish | Predecessors | Total slack | Free slack |
| --- | --- | --- | --- | --- | --- | --- | --- | --- | --- |
| 80 | 1.4.2.3.2 | **Model implementation** |  | 3d | 2007-03-27 | 2007-03-29 | 77 | 0d |  |
| 81 | 1.4.2.3.2.1 | Implement Study model |  | 3d | 2007-03-27 | 2007-03-29 |  | 0d |  |
| 82 | 1.4.2.3.2.2 | Implement Personnel model |  | 3d | 2007-03-27 | 2007-03-29 |  | 0d |  |
| 83 | 1.4.2.4 | Developer deliver UML to BAH (task 3.3.1) | milestone | 0d | 2007-03-29 | 2007-03-29 | 76 | 0d |  |
| 84 | 1.4.2.5 | BAH review of UML (task 3.3.1) |  | 10d | 2007-03-30 | 2007-04-12 | 83 | 0d |  |
| 85 | 1.4.3 | **System design (task 3.4.1)** |  | 25d | 2007-03-07 | 2007-04-10 | 63 | 2d |  |
| 86 | 1.4.3.1 | **Design eligibility** |  | 15d | 2007-03-07 | 2007-03-27 |  | 2d | 0d |
| 87 | 1.4.3.1.1 | Draft UML |  | 5d | 2007-03-07 | 2007-03-13 |  | 2d | 0d |
| 88 | 1.4.3.1.2 | Team review |  | 5d | 2007-03-14 | 2007-03-20 | 87 | 2d | 0d |
| 89 | 1.4.3.1.3 | Update design document |  | 5d | 2007-03-21 | 2007-03-27 | 88 | 2d |  |
| 90 | 1.4.3.2 | **Design personnel** |  | 15d | 2007-03-07 | 2007-03-27 |  | 2d | 0d |
| 91 | 1.4.3.2.1 | Draft UML |  | 5d | 2007-03-07 | 2007-03-13 |  | 2d | 0d |
| 92 | 1.4.3.2.2 | Team review |  | 5d | 2007-03-14 | 2007-03-20 | 91 | 2d | 0d |
| 93 | 1.4.3.2.3 | Update design document |  | 5d | 2007-03-21 | 2007-03-27 | 92 | 2d |  |
| 94 | 1.4.3.3 | **Design multi-site study** |  | 15d | 2007-03-07 | 2007-03-27 |  | 2d | 0d |
| 95 | 1.4.3.3.1 | Draft UML |  | 5d | 2007-03-07 | 2007-03-13 |  | 2d | 0d |
| 96 | 1.4.3.3.2 | Team review |  | 5d | 2007-03-14 | 2007-03-20 | 95 | 2d | 0d |
| 97 | 1.4.3.3.3 | Update design document |  | 5d | 2007-03-21 | 2007-03-27 | 96 | 2d |  |
| 98 | 1.4.3.4 | Deliver design doc to BAH (task 3.4.1) | milestone | 0d | 2007-03-27 | 2007-03-27 | 86, 90, 94 | 2d | 0d |
| 99 | 1.4.3.5 | BAH review design doc (task 3.4.1) |  | 10d | 2007-03-28 | 2007-04-10 | 98 | 2d |  |
| 100 | 1.5 | **Implementation (task 3.5.1)** |  | 11d? | 2007-03-07 | 2007-03-21 | 63 | 11d | 0d |
| 101 | 1.5.1 | Database |  | 1d? | 2007-03-07 | 2007-03-07 |  | 16d | 0d |
| 102 | 1.5.2 | Business layer |  | 1d? | 2007-03-07 | 2007-03-07 |  | 16d | 0d |
| 103 | 1.5.3 | ESB |  | 1d? | 2007-03-07 | 2007-03-07 |  | 16d | 0d |
| 104 | 1.5.4 | Grid services |  | 1d? | 2007-03-07 | 2007-03-07 |  | 16d | 0d |
| 105 | 1.5.5 | Web interface |  | 1d? | 2007-03-07 | 2007-03-07 |  | 16d | 0d |
| 106 | 1.5.6 | Security |  | 1d? | 2007-03-07 | 2007-03-07 |  | 16d | 0d |
| 107 | 1.5.7 | Deliver codebase to BAH (task 3.5.1) | milestone | 0d | 2007-03-07 | 2007-03-07 | 101, 102, 103, 104, 105, 106 | 16d | 0d |
| 108 | 1.5.8 | BAH review codebase (task 3.5.1) |  | 10d | 2007-03-08 | 2007-03-21 | 107 | 16d |  |

| ID | WBS | Task | Type | Duration | Start | Finish | Predecessors | Total slack | Free slack |
| --- | --- | --- | --- | --- | --- | --- | --- | --- | --- |
| 109 | 1.6 | **Testing** |  | 30d | 2007-03-01 | 2007-04-11 | 2 | 1d |  |
| 110 | 1.6.1 | **Developer testing** |  | 30d | 2007-03-01 | 2007-04-11 |  | 1d |  |
| 111 | 1.6.1.1 | **Update developer test plan (task 3.6.1, task 5.4.1)** |  | 30d | 2007-03-01 | 2007-04-11 |  | 1d |  |
| 112 | 1.6.1.1.1 | Developer draft |  | 5d | 2007-03-01 | 2007-03-07 |  | 1d | 0d |
| 113 | 1.6.1.1.2 | Adopter review |  | 5d | 2007-03-08 | 2007-03-14 | 112 | 1d | 0d |
| 114 | 1.6.1.1.3 | Developer update |  | 5d | 2007-03-15 | 2007-03-21 | 113 | 1d | 0d |
| 115 | 1.6.1.1.4 | Adopter review and sign |  | 5d | 2007-03-22 | 2007-03-28 | 114 | 1d | 0d |
| 116 | 1.6.1.1.5 | Deliver signed test plan to BAH (task 3.6.1, task 5.4.1) | milestone | 0d | 2007-03-28 | 2007-03-28 | 115 | 1d | 0d |
| 117 | 1.6.1.1.6 | BAH review signed test plan (task 3.6.1, task 5.4.1) |  | 10d | 2007-03-29 | 2007-04-11 | 116 | 1d |  |
| 118 | 1.6.1.2 | **Integration and system testing (task 3.8.1)** |  | 10d | 2007-03-15 | 2007-03-28 | 100FS-5d, 112 | 11d |  |
| 119 | 1.6.1.2.1 | Generate test data |  | 1d | 2007-03-15 | 2007-03-15 |  | 20d |  |
| 120 | 1.6.1.2.2 | Write tests |  | 3d | 2007-03-15 | 2007-03-19 |  | 16d | 0d |
| 121 | 1.6.1.2.3 | Validate tests |  | 1d | 2007-03-20 | 2007-03-20 | 120 | 16d | 0d |
| 122 | 1.6.1.2.4 | Generate test report |  | 1d | 2007-03-21 | 2007-03-21 | 121 | 16d |  |
| 123 | 1.6.1.2.5 | Deliver test report to BAH (task 3.8.1) | milestone | 0d | 2007-03-15 | 2007-03-15 |  | 21d |  |
| 124 | 1.6.1.2.6 | BAH review test report (task 3.8.1) |  | 10d | 2007-03-15 | 2007-03-28 |  | 11d |  |
| 125 | 1.6.2 | **Adopter testing** |  | 30d | 2007-03-01 | 2007-04-11 |  | 1d |  |
| 126 | 1.6.2.1 | **Update adopter test plan (task 5.5.1)** |  | 30d | 2007-03-01 | 2007-04-11 |  | 1d |  |
| 127 | 1.6.2.1.1 | Adopter update test script |  | 5d | 2007-03-01 | 2007-03-07 |  | 1d | 0d |
| 128 | 1.6.2.1.2 | Adopter update test approach |  | 5d | 2007-03-08 | 2007-03-14 | 127 | 1d | 0d |
| 129 | 1.6.2.1.3 | Developer review |  | 5d | 2007-03-15 | 2007-03-21 | 128 | 1d | 0d |
| 130 | 1.6.2.1.4 | Adopter update |  | 5d | 2007-03-22 | 2007-03-28 | 129 | 1d | 0d |
| 131 | 1.6.2.1.5 | Developer deliver adopter test plan to BAH (task 5.5.1) | milestone | 0d | 2007-03-28 | 2007-03-28 | 130 | 1d | 0d |
| 132 | 1.6.2.1.6 | BAH review adopter test plan (task 5.5.1) |  | 10d | 2007-03-29 | 2007-04-11 | 131 | 1d |  |

| ID | WBS | Task | Type | Duration | Start | Finish | Predecessors | Complete | Remaining | Total slack | Free slack |
| --- | --- | --- | --- | --- | --- | --- | --- | --- | --- | --- | --- |
| 133 | 1.6.2.2 | **QA testing (task 5.6.1)** |  | 22d | 2007-03-08 | 2007-04-06 | 127 |  |  | 4d |  |
| 134 | 1.6.2.2.1 | Adopter create test data |  | 5d | 2007-03-08 | 2007-03-14 |  |  |  | 4d | 0d |
| 135 | 1.6.2.2.2 | Adopter perform test script |  | 5d | 2007-03-15 | 2007-03-21 | 134 |  |  | 4d | 0d |
| 136 | 1.6.2.2.3 | Adopter document results |  | 2d | 2007-03-22 | 2007-03-23 | 135 |  |  | 4d | 0d |
| 137 | 1.6.2.2.4 | Adopter log bugs |  | 2d | 2007-03-26 | 2007-03-27 | 136 |  |  | 12d |  |
| 138 | 1.6.2.2.5 | Developer deliver adopter test report to BAH (task 5.6.1) | milestone | 0d | 2007-03-23 | 2007-03-23 | 136 |  |  | 4d | 0d |
| 139 | 1.6.2.2.6 | BAH review adopter test report (task 5.6.1) |  | 10d | 2007-03-26 | 2007-04-06 | 138 |  |  | 4d |  |
| 143 | 1.7 | **Analysis and Design** |  | 1d? | 2006-11-01 | 2006-11-01 |  |  |  | 116d |  |
| 144 | 1.7.1 | **Perform level 1 design** |  | 1d | 2006-11-01 | 2006-11-01 |  |  |  | 116d |  |
| 145 | 1.7.1.1 | Perform cursory BRIDG harmonization |  | 1d | 2006-11-01 | 2006-11-01 |  |  |  | 116d |  |
| 146 | 1.7.1.2 | Update implementation model |  | 1d | 2006-11-01 | 2006-11-01 |  |  |  | 116d |  |
| 147 | 1.7.2 | Update design document (task 3.4.1) |  | 1d? | 2006-11-01 | 2006-11-01 |  |  |  | 116d |  |
| 150 | 2 | **Project Management** |  | 96d | 2006-11-01 A | 2007-03-14 |  | 95% | 4.44d | 21d |  |
| 151 | 2.1 | **Draft project plan (task 1.1)** |  | 20d | 2006-11-01 A | 2006-11-28 |  | 50% | 10d | 97d |  |
| 152 | 2.1.1 | Developer draft |  | 5d | 2006-11-01 A | 2006-11-07 A |  | 100% |  |  |  |
| 153 | 2.1.2 | Adopter review |  | 3d | 2006-11-08 A | 2006-11-10 A | 152 | 100% |  |  |  |
| 154 | 2.1.3 | Developer update |  | 2d | 2006-11-13 A | 2006-11-14 A | 153 | 100% |  |  |  |
| 155 | 2.1.4 | Deliver to BAH | milestone | 0d | 2006-11-14 A | 2006-11-14 A | 154 | 100% |  |  |  |
| 156 | 2.1.5 | BAH review |  | 10d | 2006-11-15 | 2006-11-28 | 155 |  |  | 97d |  |
| 157 | 2.2 | **Draft communication plan (task 1.2)** |  | 32d | 2006-11-01 A | 2006-12-14 A |  | 100% |  |  |  |
| 158 | 2.2.1 | Developer draft |  | 12d | 2006-11-01 A | 2006-11-16 A |  | 100% |  |  |  |
| 159 | 2.2.2 | Adopter review |  | 5d | 2006-11-17 A | 2006-11-23 A | 158 | 100% |  |  |  |
| 160 | 2.2.3 | Developer update |  | 5d | 2006-11-24 A | 2006-11-30 A | 159 | 100% |  |  |  |
| 161 | 2.2.4 | Deliver to BAH | milestone | 0d | 2006-11-30 A | 2006-11-30 A | 160 | 100% |  |  |  |
| 162 | 2.2.5 | BAH review |  | 10d | 2006-12-01 A | 2006-12-14 A | 161 | 100% |  |  |  |

| ID | WBS | Task | Type | Duration | Start | Finish | Predecessors | Complete | Remaining | Total slack |
| --- | --- | --- | --- | --- | --- | --- | --- | --- | --- | --- |
| 163 | 2.3 | **Draft risk matrix (task 1.4.1)** |  | 22d | 2006-11-01 A | 2006-11-30 A |  | 100% |  |  |
| 164 | 2.3.1 | Developer draft |  | 12d | 2006-11-01 A | 2006-11-16 A |  | 100% |  |  |
| 165 | 2.3.2 | Deliver to BAH | milestone | 0d | 2006-11-16 A | 2006-11-16 A | 164 | 100% |  |  |
| 166 | 2.3.3 | BAH review |  | 10d | 2006-11-17 A | 2006-11-30 A | 165 | 100% |  |  |
| 167 | 2.4 | **Update risk matrix (task 1.3.1)** |  | 20d | 2006-11-17 A | 2006-12-14 A |  | 100% |  |  |
| 168 | 2.4.1 | Developer draft |  | 10d | 2006-11-17 A | 2006-11-30 A | 163 | 100% |  |  |
| 169 | 2.4.2 | Deliver to BAH | milestone | 0d | 2006-11-30 A | 2006-11-30 A | 168 | 100% |  |  |
| 170 | 2.4.3 | BAH review |  | 10d | 2006-12-01 A | 2006-12-14 A | 169 | 100% |  |  |
| 171 | 2.5 | **Monthly report (task 1.3.1)** |  | 32d | 2006-11-01 A | 2006-12-14 A |  | 100% |  |  |
| 172 | 2.5.1 | Developer draft |  | 22d | 2006-11-01 A | 2006-11-30 A |  | 100% |  |  |
| 173 | 2.5.2 | Deliver to BAH | milestone | 0d | 2006-11-30 A | 2006-11-30 A | 172 | 100% |  |  |
| 174 | 2.5.3 | BAH review |  | 10d | 2006-12-01 A | 2006-12-14 A | 173 | 100% |  |  |
| 175 | 2.6 | **Test plan document (task 2.6.1)** |  | 22d | 2006-11-01 A | 2006-11-30 |  | 69% | 6.88d | 95d |
| 176 | 2.6.1 | Developer draft |  | 12d | 2006-11-01 A | 2006-11-16 A |  | 100% |  |  |
| 177 | 2.6.2 | Adopter review |  | 5d | 2006-11-17 A | 2006-11-23 A | 176 | 100% |  |  |
| 178 | 2.6.3 | Developer update |  | 5d | 2006-11-24 A | 2006-11-30 A | 177 | 100% |  |  |
| 179 | 2.6.4 | Deliver to BAH | milestone | 0d | 2006-11-14 A | 2006-11-14 A | 178 | 100% |  |  |
| 180 | 2.6.5 | BAH review |  | 10d | 2006-11-15 | 2006-11-28 | 179 |  |  | 97d |
| 181 | 2.7 | **Requirements** |  | 96d | 2006-11-01 A | 2007-03-14 | 2 | 92% | 7.33d | 21d |
| 182 | 2.7.1 | **Draft meeting notes from face-to-face (task 1.5)** |  | 22d | 2006-11-01 A | 2006-11-30 A |  | 100% |  |  |
| 183 | 2.7.1.1 | Developer draft |  | 12d | 2006-11-01 A | 2006-11-16 A |  | 100% |  |  |
| 184 | 2.7.1.2 | Adopter review |  | 5d | 2006-11-17 A | 2006-11-23 A | 183 | 100% |  |  |
| 185 | 2.7.1.3 | Developer update |  | 5d | 2006-11-24 A | 2006-11-30 A | 184 | 100% |  |  |
| 186 | 2.7.1.4 | Deliver to BAH | milestone | 0d | 2006-11-14 A | 2006-11-14 A | 185 | 100% |  |  |
| 187 | 2.7.1.5 | BAH review |  | 10d | 2006-11-15 A | 2006-11-28 A | 186 | 100% |  |  |

| ID | WBS | Task | Type | Duration | Start | Finish | Predecessors | Complete | Remaining | Total slack |
| --- | --- | --- | --- | --- | --- | --- | --- | --- | --- | --- |
| 188 | 2.7.2 | **Refine vision and scope document (task 1.8)** |  | 22d | 2006-11-01 A | 2006-11-30 A |  | 100% |  |  |
| 189 | 2.7.2.1 | Developer draft | milestone | 12d | 2006-11-01 A | 2006-11-16 A |  | 100% |  |  |
| 190 | 2.7.2.2 | Adopter review | milestone | 5d | 2006-11-24 A | 2006-11-30 A | 189 | 100% |  |  |
| 191 | 2.7.2.3 | Developer update |  | 5d | 2006-11-01 A | 2006-11-07 A | 190 | 100% |  |  |
| 192 | 2.7.2.4 | Deliver to BAH | milestone | 0d | 2006-11-01 A | 2006-11-01 A | 191 | 100% |  |  |
| 193 | 2.7.2.5 | BAH review |  | 10d | 2006-11-01 A | 2006-11-14 A | 192 | 100% |  |  |
| 194 | 2.7.3 | **Draft level 1 use cases and requirements** |  | 2d | 2006-11-01 A | 2006-11-02 A |  | 100% |  |  |
| 195 | 2.7.3.1 | Developer draft | milestone | 2d | 2006-11-01 A | 2006-11-02 A |  | 100% |  |  |
| 196 | 2.7.4 | **Draft use case document (task 2.1.1)** |  | 32d | 2006-11-01 A | 2006-12-14 A |  | 100% |  |  |
| 197 | 2.7.4.1 | Integrate level 1 use cases |  | 2d | 2006-11-01 A | 2006-11-02 A | 194 | 100% |  |  |
| 198 | 2.7.4.2 | Draft protocol management use cases |  | 11d | 2006-11-02 A | 2006-11-16 A |  | 100% |  |  |
| 199 | 2.7.4.3 | Adopter review |  | 5d | 2006-11-17 A | 2006-11-23 A | 198 | 100% |  |  |
| 200 | 2.7.4.4 | Developer update |  | 5d | 2006-11-24 A | 2006-11-30 A | 199 | 100% |  |  |
| 201 | 2.7.4.5 | Deliver to BAH | milestone | 0d | 2006-11-30 A | 2006-11-30 A | 200 | 100% |  |  |
| 202 | 2.7.4.6 | BAH review |  | 10d | 2006-12-01 A | 2006-12-14 A | 201 | 100% |  |  |
| 203 | 2.7.5 | **SRS document (task 2.2.1)** |  | 96d | 2006-11-01 A | 2007-03-14 |  | 69% | 30d | 21d |
| 204 | 2.7.5.1 | Developer draft | milestone | 12d | 2006-11-01 A | 2006-11-16 A |  | 100% |  |  |
| 205 | 2.7.5.2 | Adopter review | milestone | 5d | 2006-11-17 A | 2006-11-23 A | 204 | 100% |  |  |
| 206 | 2.7.5.3 | Developer update |  | 5d | 2006-11-24 A | 2006-11-30 A | 205 | 100% |  |  |
| 207 | 2.7.5.4 | Deliver to BAH | milestone | 0d | 2006-11-30 A | 2006-11-30 A | 206 | 100% |  |  |
| 208 | 2.7.5.5 | BAH review |  | 10d | 2007-03-01 | 2007-03-14 | 207 |  |  | 21d |
| 209 | 2.8 | **Analysis and Design** |  | 32d | 2006-11-01 A | 2006-12-14 A | 2 | 100% |  |  |
| 210 | 2.8.1 | **Design document (task 2.4.1)** |  | 32d | 2006-11-01 A | 2006-12-14 A |  | 100% |  |  |
| 211 | 2.8.1.1 | Developer draft | milestone | 12d | 2006-11-01 A | 2006-11-16 A |  | 100% |  |  |
| 212 | 2.8.1.2 | Adopter review | milestone | 5d | 2006-11-17 A | 2006-11-23 A | 211 | 100% |  |  |
| 213 | 2.8.1.3 | Developer update |  | 5d | 2006-11-24 A | 2006-11-30 A | 212 | 100% |  |  |
| 214 | 2.8.1.4 | Deliver to BAH | milestone | 0d | 2006-11-30 A | 2006-11-30 A | 213 | 100% |  |  |
| 215 | 2.8.1.5 | BAH review |  | 10d | 2006-12-01 A | 2006-12-14 A | 214 | 100% |  |  |

| ID | WBS | Task | Type | Duration | Start | Finish | Predecessors | Complete |
| --- | --- | --- | --- | --- | --- | --- | --- | --- |
| 216 | 2.8.2 | **UML diagrams (task 2.3.1)** |  | 32d | 2006-11-01 A | 2006-12-14 A |  | 100% |
| 217 | 2.8.2.1 | Developer draft | milestone | 12d | 2006-11-01 A | 2006-11-16 A |  | 100% |
| 218 | 2.8.2.2 | Adopter review | milestone | 5d | 2006-11-17 A | 2006-11-23 A | 217 | 100% |
| 219 | 2.8.2.3 | Developer update |  | 5d | 2006-11-24 A | 2006-11-30 A | 218 | 100% |
| 220 | 2.8.2.4 | Deliver to BAH | milestone | 0d | 2006-11-30 A | 2006-11-30 A | 219 | 100% |
| 221 | 2.8.2.5 | BAH review |  | 10d | 2006-12-01 A | 2006-12-14 A | 220 | 100% |
| 222 | 2.8.3 | **ESB** |  | 5d | 2006-11-01 A | 2006-11-07 A |  | 100% |
| 223 | 2.8.3.1 | Evalutate technologies by prototyping |  | 5d | 2006-11-01 A | 2006-11-07 A |  | 100% |
| 224 | 2.8.4 | **Grid service** |  | 7d | 2006-11-01 A | 2006-11-09 A |  | 100% |
| 225 | 2.8.4.1 | Evaluate caGrid 1.0 service infrastructure |  | 7d | 2006-11-01 A | 2006-11-09 A |  | 100% |
| 226 | 2.8.5 | **Database** |  | 7d | 2006-11-01 A | 2006-11-09 A |  | 100% |
| 227 | 2.8.5.1 | First draft of protocol database structure |  | 7d | 2006-11-01 A | 2006-11-09 A |  | 100% |
| 228 | 2.8.6 | **Domain model** |  | 22d | 2006-11-01 A | 2006-11-30 A |  | 100% |
| 229 | 2.8.6.1 | Create protocol model harmonized with BRIDG |  | 10d | 2006-11-01 A | 2006-11-14 A | 194 | 100% |
| 230 | 2.8.6.2 | Create first draft of protocol model |  | 11d | 2006-11-16 A | 2006-11-30 A | 229 | 100% |
| 231 | 2.8.7 | **Security** |  | 22d | 2006-11-01 A | 2006-11-30 A |  | 100% |
| 232 | 2.8.7.1 | Evaluate caGrid 1.0 security infrastructure |  | 22d | 2006-11-01 A | 2006-11-30 A |  | 100% |
| 233 | 2.9 | **Implementation** |  | 32d | 2006-11-01 A | 2006-12-14 A | 2 | 100% |
| 234 | 2.9.1 | **Web interface** |  | 22d | 2006-11-01 A | 2006-11-30 A |  | 100% |
| 235 | 2.9.1.1 | Migrate v1 code into codebase |  | 22d | 2006-11-01 A | 2006-11-30 A |  | 100% |
| 236 | 2.9.2 | **Enterprise Service Bus** |  | 22d | 2006-11-01 A | 2006-11-30 A |  | 100% |
| 237 | 2.9.2.1 | Setup initial project |  | 22d | 2006-11-01 A | 2006-11-30 A |  | 100% |
| 238 | 2.9.3 | **Grid service** |  | 15d | 2006-11-10 A | 2006-11-30 A |  | 100% |
| 239 | 2.9.3.1 | Create grid service skeleton |  | 15d | 2006-11-10 A | 2006-11-30 A | 225, 194 | 100% |

| ID | WBS | Task | Type | Duration | Start | Finish | Predecessors | Complete |
| --- | --- | --- | --- | --- | --- | --- | --- | --- |
| 240 | 2.9.4 | **Database** |  | 22d | 2006-11-01 A | 2006-11-30 A |  | 100% |
| 241 | 2.9.4.1 | Migrate v1 code into codebase |  | 22d | 2006-11-01 A | 2006-11-30 A |  | 100% |
| 242 | 2.9.4.2 | Implement protocol database structure |  | 22d | 2006-11-01 A | 2006-11-30 A | 194 | 100% |
| 243 | 2.9.5 | **Domain model** |  | 22d | 2006-11-01 A | 2006-11-30 A |  | 100% |
| 244 | 2.9.5.1 | Migrate v1 code into codebase |  | 22d | 2006-11-01 A | 2006-11-30 A |  | 100% |
| 245 | 2.9.5.2 | Implement protocol model |  | 15d | 2006-11-01 A | 2006-11-21 A | 194 | 100% |
| 246 | 2.9.5.3 | Create OR mapping for protocol model |  | 7d | 2006-11-22 A | 2006-11-30 A | 245 | 100% |
| 247 | 2.9.6 | **Business layer** |  | 22d | 2006-11-01 A | 2006-11-30 A |  | 100% |
| 248 | 2.9.6.1 | Migrate v1 code |  | 22d | 2006-11-01 A | 2006-11-30 A |  | 100% |
| 249 | 2.9.7 | **Prototype code (task 2.5.1)** |  | 32d | 2006-11-01 A | 2006-12-14 A |  | 100% |
| 250 | 2.9.7.1 | Developer Draft |  | 22d | 2006-11-01 A | 2006-11-30 A |  | 100% |
| 251 | 2.9.7.2 | Deliver to BAH | milestone | 0d | 2006-11-30 A | 2006-11-30 A | 250 | 100% |
| 252 | 2.9.7.3 | BAH review |  | 10d | 2006-12-01 A | 2006-12-14 A | 251 | 100% |
| 253 | 2.10 | **Testing** |  | 32d | 2006-11-01 A | 2006-12-14 A | 2 | 100% |
| 254 | 2.10.1 | Implement unit tests |  | 20d | 2006-11-01 A | 2006-11-28 A |  | 100% |
| 255 | 2.10.2 | **Test report (task 2.7.1)** |  | 12d | 2006-11-29 A | 2006-12-14 A |  | 100% |
| 256 | 2.10.2.1 | Developer draft |  | 2d | 2006-11-29 A | 2006-11-30 A | 254 | 100% |
| 257 | 2.10.2.2 | Deliver to BAH | milestone | 0d | 2006-11-30 A | 2006-11-30 A | 256 | 100% |
| 258 | 2.10.2.3 | BAH review |  | 10d | 2006-12-01 A | 2006-12-14 A | 257 | 100% |
